# Global Treps Project Rev 4

Schedule from MS Project, 2023-01-25 to 2024-01-25, costs in $.
Grand Canyon University

## Calendars

- Standard: Mon-Fri 08:00-12:00, 13:00-17:00; Sat-Sun off.

## Resources

| Resource | Rate |
| --- | --- |
| Project Manager | 120 |
| Support Team Manager | 55 |
| System Test Engineer | 55 |
| Website Developer | 95 |
| Event Runner: Ethopia | 45 |
| Event Runner: Vietnam | 55 |
| Event Runner: India | 55 |

## Schedule

| ID | WBS | Task | Duration | Start | Finish | Predecessors | Total slack | Free slack | Resources | Work | Cost |
| --- | --- | --- | --- | --- | --- | --- | --- | --- | --- | --- | --- |
| 1 | 1 | **Initiating** | 10d | 2023-01-25 | 2023-02-07 |  | 0d |  |  | 80h | 9,600 |
| 2 | 1.1 | Finalize project team | 5d | 2023-01-25 | 2023-01-31 |  | 0d |  | Project Manager | 40h | 4,800 |
| 3 | 1.2 | Develop project charter | 5d | 2023-02-01 | 2023-02-07 | 2 | 0d |  | Project Manager | 40h | 4,800 |
| 4 | 2 | **Planning** | 28d | 2023-02-08 | 2023-03-17 |  | 0d |  |  | 224h | 26,880 |
| 5 | 2.1 | Develop scope statement | 8d | 2023-02-08 | 2023-02-17 | 3 | 0d |  | Project Manager | 64h | 7,680 |
| 6 | 2.2 | Develop and refine other plans | 20d | 2023-02-20 | 2023-03-17 | 5 | 37d |  | Project Manager | 160h | 19,200 |
| 7 | 3 | **Executing** | 237d | 2023-02-20 | 2024-01-16 |  | 0d |  |  | 5184h | 394,880 |
| 8 | 3.1 | **Concept** | 77d | 2023-02-20 | 2023-06-06 |  | 0d |  |  | 1560h | 131,760 |
| 9 | 3.1.1 | Conduct research for income mechanism into Global Treps | 20d | 2023-02-20 | 2023-03-17 | 5 | 224d |  | Support Team Manager | 160h | 8,800 |
| 10 | 3.1.2 | Evaluate current systems | 5d | 2023-02-20 | 2023-02-24 | 5 | 0d |  | Support Team Manager; System Test Engineer | 80h | 4,400 |
| 11 | 3.1.3 | Define requirements | 15d | 2023-02-27 | 2023-03-17 | 5, 10 | 0d |  | Website Developer | 120h | 11,400 |
| 12 | 3.1.4 | Define user requirements | 12d | 2023-03-20 | 2023-04-04 | 11 | 4d |  | Website Developer | 96h | 9,120 |
| 13 | 3.1.5 | Define content requirements | 16d | 2023-03-20 | 2023-04-10 | 11 | 0d |  | Website Developer | 128h | 12,160 |
| 14 | 3.1.6 | Define system requirements | 18d | 2023-04-11 | 2023-05-04 | 13 | 173d | 0d | Website Developer | 144h | 13,680 |
| 15 | 3.1.7 | Define server owner requirements | 16d | 2023-05-05 | 2023-05-26 | 14 | 173d | 6d | Website Developer | 128h | 12,160 |
| 16 | 3.1.8 | Define specific functionality | 21d | 2023-04-11 | 2023-05-09 | 12, 13 | 0d |  | Support Team Manager; System Test Engineer | 336h | 18,480 |
| 17 | 3.1.9 | Define risks and risk management approach | 13d | 2023-02-27 | 2023-03-15 | 10 | 39d |  | Project Manager; Website Developer | 208h | 22,360 |
| 18 | 3.1.10 | Develop project plan | 19d | 2023-05-10 | 2023-06-05 | 6, 16, 17 | 0d |  | Project Manager | 152h | 18,240 |
| 19 | 3.1.11 | Brief web development team | 1d | 2023-06-06 | 2023-06-06 | 15, 18 | 167d |  | Project Manager | 8h | 960 |
| 20 | 3.2 | **Web Site Design** | 19d | 2023-06-06 | 2023-06-30 |  | 0d |  |  | 784h | 64,880 |
| 21 | 3.2.1 | Create templates and guidelines for running events | 15d | 2023-06-06 | 2023-06-26 | 18 | 149d | 0d | Support Team Manager; System Test Engineer | 240h | 13,200 |
| 22 | 3.2.2 | Design donation portal for potential investors | 19d | 2023-06-06 | 2023-06-30 | 18 | 0d |  | Website Developer | 152h | 14,440 |
| 23 | 3.2.3 | Design a submission page for new ideas on products/services | 13d | 2023-06-06 | 2023-06-22 | 18 | 6d | 0d | Website Developer | 104h | 9,880 |
| 24 | 3.2.4 | Design registration for organizations to develop custom websites | 12d | 2023-06-06 | 2023-06-21 | 18 | 7d | 0d | Website Developer | 96h | 9,120 |
| 25 | 3.2.5 | Design tracking system | 9d | 2023-06-06 | 2023-06-16 | 18 | 16d | 0d | Website Developer | 72h | 6,840 |
| 26 | 3.2.6 | Design incentive system | 15d | 2023-06-06 | 2023-06-26 | 18 | 10d | 0d | Website Developer | 120h | 11,400 |

Notes:
- 3: Informs the stakeholders of scope, objectives and team involved in the project / Includes documentation of priorities, people involved, and breadth of the project / Results in information of scope, objective and team members involved to the stakeholders
- 5: Defines the limits of the project and how far it is allowed to go / Includes the deliverables and major objectives / Produces documentation of all project deliverables and main objectives
- 9: Allows for stakeholders investments to be recuperated and for revenue to be made / Includes revenue collecting for Global Treps / Produces sytem that allows for collection of revenue for Global Treps
- 11: Defines the necessities for the project / Includes all systems need for website and mobile app / Produces documentation of list of all required features needed for 1.0 launch
- 12: Defines all requirements for those using the site and app / Includes all featured needed for solid user experience / Produces a list of needed features for the user
- 14: Defines all elements the system will need for the site and mobile app to run / Includes coding and infrastructure of website and application / Results in working back end of website and moblie application
- 17: Provides plan for minimizing risks to the project and what to do when those risks arise / Includes mutiple avenues to take if risks appear during the project and how to prevent them at all / Results in less risks being taken by the project but time taken to prevent said risks
- 18: Defines the way the project will be executed and controlled / Includes documentation of schedules and methods of scope controll / Results in a documement comprised of directions to steer and complete the project
- 21: Allows for groups and individuals creating events events to run them smoothly, efficently, and similarly to other Global Treps events / Includes paper templates/guides and video guides / Results in more high quality Global Treps events to be produced
- 22: Allows users to be informed when engaging in donations / Includes initial disclosure statement before donation and follow-up documentation of a user's donation transaction / Produces disclosure communication to users to decision-making
- 25: Enables appropriate understanding of stakeholder preferences and monitoring progress / Includes a Gantt chart with milestones and documented stakeholder preferences / Results in providing needed information to monitor project progress
- 26: Provides planning around leveraging website appeal to capture market interest / Includes documentation of stakeholder requirements and marketable website components / Results in information to use for gathering and retaining market interest in the Global Treps website

| ID | WBS | Task | Duration | Start | Finish | Predecessors | Total slack | Resources | Work | Cost |
| --- | --- | --- | --- | --- | --- | --- | --- | --- | --- | --- |
| 27 | 3.3 | **Web Site Development** | 68d | 2023-06-19 | 2023-09-20 |  | 10d |  | 1136h | 93,840 |
| 28 | 3.3.1 | Develop donation portal for potential investors | 22d | 2023-07-03 | 2023-08-01 | 22 | 0d | Website Developer | 176h | 16,720 |
| 29 | 3.3.2 | Develop a submission page for new ideas on products/services | 22d | 2023-06-23 | 2023-07-24 | 23 | 6d | Website Developer | 176h | 16,720 |
| 30 | 3.3.3 | Develop a registration page for organizations to develop custom websites | 22d | 2023-06-22 | 2023-07-21 | 24 | 7d | Website Developer | 176h | 16,720 |
| 31 | 3.3.4 | Develop tracking system | 16d | 2023-06-19 | 2023-07-10 | 25 | 16d | Website Developer | 128h | 12,160 |
| 32 | 3.3.5 | Develop incentive system | 16d | 2023-06-27 | 2023-07-18 | 26 | 10d | Website Developer | 128h | 12,160 |
| 33 | 3.3.6 | Upload templates and guidelines | 4d | 2023-06-27 | 2023-06-30 | 21, 23 | 149d | Support Team Manager | 32h | 1,760 |
| 34 | 3.3.7 | Conduct Verification Testing | 18d | 2023-08-02 | 2023-08-25 | 28, 29, 30, 31, 32 | 0d | System Test Engineer | 144h | 7,920 |
| 35 | 3.3.8 | Conduct Validation Testing | 14d | 2023-08-28 | 2023-09-14 | 34 | 0d | System Test Engineer | 112h | 6,160 |
| 36 | 3.3.9 | Conduct Pilot Testing | 4d | 2023-09-15 | 2023-09-20 | 35 | 0d | Support Team Manager; System Test Engineer | 64h | 3,520 |
| 37 | 3.4 | **Roll Out** | 74d | 2023-09-21 | 2024-01-02 |  | 0d |  | 1336h | 80,560 |
| 38 | 3.4.1 | Hold Four Events (in different countries) to Test Site Functionality | 44d | 2023-09-21 | 2023-11-21 | 36 | 0d | Event Runner: Ethopia; Support Team Manager; System Test Engineer | 1056h | 54,560 |
| 39 | 3.4.2 | Obtain Feedback | 3d | 2023-11-22 | 2023-11-24 | 38 | 0d | Project Manager | 24h | 2,880 |
| 40 | 3.4.3 | Implement Changes | 12d | 2023-11-27 | 2023-12-12 | 39 | 0d | Website Developer | 96h | 9,120 |
| 41 | 3.4.4 | Move site to production server | 4d | 2023-12-13 | 2023-12-18 | 40 | 0d | System Test Engineer | 32h | 1,760 |
| 42 | 3.4.5 | Determine roll out schedule | 6d | 2023-12-19 | 2023-12-26 | 40, 41 | 0d | Project Manager | 48h | 5,760 |
| 43 | 3.4.6 | Communicate roll out plan to users | 4d | 2023-12-27 | 2024-01-01 | 42 | 0d | Project Manager | 32h | 3,840 |
| 44 | 3.4.7 | Conduct user training | 5d | 2023-09-21 | 2023-09-27 | 36 | 69d | System Test Engineer | 40h | 2,200 |
| 45 | 3.4.8 | Deploy system | 1d | 2024-01-02 | 2024-01-02 | 43 | 0d | System Test Engineer | 8h | 440 |
| 46 | 3.5 | **Support** | 10d | 2024-01-03 | 2024-01-16 |  | 0d |  | 368h | 23,840 |
| 47 | 3.5.1 | Determine what support resources are needed | 3d | 2024-01-03 | 2024-01-05 | 44, 45 | 0d | Support Team Manager; System Test Engineer | 48h | 2,640 |
| 48 | 3.5.2 | Make appropriate staffing changes | 3d | 2024-01-08 | 2024-01-10 | 47 | 3d | Project Manager | 24h | 2,880 |
| 49 | 3.5.3 | Determine method that users will attain support | 3d | 2024-01-08 | 2024-01-10 | 47 | 3d | Event Runner: Ethopia; Project Manager; Support Team Manager; System Test Engineer; Website Developer | 120h | 8,880 |
| 50 | 3.5.4 | Determine support process | 6d | 2024-01-08 | 2024-01-15 | 47 | 0d | Event Runner: Ethopia; Support Team Manager; System Test Engineer | 144h | 7,440 |
| 51 | 3.5.5 | Launch support | 1d | 2024-01-16 | 2024-01-16 | 48, 49, 50 | 0d | Event Runner: Ethopia; Support Team Manager; System Test Engineer; Website Developer | 32h | 2,000 |

Notes:
- 31: Allows Global Treps to verify stakeholder preferences and implementing appropriate / Includes documentation on website's monitoring software and any additional stakeholder preference / Results in acting upon determined stakeholder preferences for unobtrusive monitoring
- 32: Allows users to be encouraged in running and participating in events / Includes loyalty rewards and other incentives for all users / Results in system helping to up the user retention
- 34: Allows project manager to make sure all documents and plans are complete / Includes thoroughly created plans / Results in well created plans to be implemented
- 35: Allows project manager to make sure all systems are complete / Includes thoroughly created systems / Results in well created systems to be implemented
- 40: Allows for improvements to be made to templates, guidelines, and systems / Includes better versions of previously created aspects of the project / Results in superior versions of templates, guidelines, and systems
- 42: Allows for quick and smooth launch of the project / Includes documentation of plan to release all aspects of the project that were devloped / Results in the document specifing how and when the project is rolled out to the public
- 44: Enables target audience to have a full and complete understanding of all aspects of the project / Includes ways to train all users in the systems and templates created / Results in understanding of how to use all created public assets of the project
- 49: Enables users to have a lifeline to Global Treps in case of a failure / Includes live chat and voice call assistence to user / Results in system to help users tackle problems
- 50: Allows employees a systematic way to help users / Includes documentation of steps and theories based on user information as to what the problem is / Results in process for employees to quickly solve user problems

| ID | WBS | Task | Duration | Start | Finish | Predecessors | Total slack | Resources | Work | Cost |
| --- | --- | --- | --- | --- | --- | --- | --- | --- | --- | --- |
| 52 | 4 | **Controlling** | 1d | 2024-01-17 | 2024-01-17 |  | 0d |  | 8h | 960 |
| 53 | 4.1 | Hold formal customer review | 1d | 2024-01-17 | 2024-01-17 | 51 | 0d | Project Manager | 8h | 960 |
| 54 | 5 | **Closing** | 6d | 2024-01-18 | 2024-01-25 |  | 0d |  | 48h | 5,760 |
| 55 | 5.1 | Prepare final report and presentation | 5d | 2024-01-18 | 2024-01-24 | 53 | 0d | Project Manager | 40h | 4,800 |
| 56 | 5.2 | Deliver final report and presentation | 1d | 2024-01-25 | 2024-01-25 | 55 | 0d | Project Manager | 8h | 960 |

Notes:
- 55: Allows project manager a way to communicate successes and failures overcame during the project to stakeholders / Includes document of final report and complementary presentation / Results in project experience knowledge beinging imparted onto stakeholders
